# 集团（股份、政务、金融、江分）资产云上线任务

Schedule from a web Gantt chart, 2025-07-18 to 2025-08-04.
Every day is a working day

## Schedule

| ID | WBS | Task | Duration | Start | Finish | Complete | inPeople |
| --- | --- | --- | --- | --- | --- | --- | --- |
| 2 | 1 | **UI模板差异化配置** | 1d | 2025-07-22 | 2025-07-22 | 67% |  |
| 3 | 1.1 | 政务 | 1d | 2025-07-22 | 2025-07-22 | 100% | 金鹏 |
| 4 | 1.2 | 金融 | 1d | 2025-07-22 | 2025-07-22 |  | 陈栎 |
| 5 | 1.3 | 股份 | 1d | 2025-07-22 | 2025-07-22 | 100% | 王世雷 |
| 6 | 2 | **工作流配置** | 1d | 2025-07-23 | 2025-07-23 | 38% |  |
| 7 | 2.1 | 政务 | 1d | 2025-07-23 | 2025-07-23 |  | 金鹏 |
| 8 | 2.2 | 金融 | 1d | 2025-07-23 | 2025-07-23 |  | 陈栎 |
| 9 | 2.3 | 股份（除江分） | 1d | 2025-07-23 | 2025-07-23 | 100% | 王世雷 |
| 10 | 2.4 | 江西分公司 | 1d | 2025-07-23 | 2025-07-23 | 50% | 郭加升、朱涛 |
| 11 | 3 | **资产云推送使用信息变动到NC65程序开发** | 14d | 2025-07-18 | 2025-07-31 | 69% |  |
| 12 | 3.1 | 接口权限开放、表头数据开放 | 1d | 2025-07-18 | 2025-07-18 | 100% | 王世雷、张宏飞、陈冲、刘洋 |
| 13 | 3.2 | 程序开发 | 5d | 2025-07-18 | 2025-07-22 | 100% | 陈冲 |
| 14 | 3.3 | 测试 | 10d | 2025-07-22 | 2025-07-31 | 50% | 陈冲 |
| 15 | 4 | 各机构资产云全员应用授权程序开发 | 5d | 2025-07-18 | 2025-07-22 | 100% | 张砾君 |
| 16 | 5 | **407资产数据梳理** | 2d | 2025-07-24 | 2025-07-25 |  |  |
| 17 | 5.1 | 政务 | 2d | 2025-07-24 | 2025-07-25 |  | 金鹏 |
| 18 | 5.2 | 金融 | 2d | 2025-07-24 | 2025-07-25 |  | 陈栎 |
| 19 | 5.3 | **股份（除江分）** | 2d | 2025-07-24 | 2025-07-25 |  | 王世雷 |
| 20 | 5.3.1 | 数据中心 | 2d | 2025-07-24 | 2025-07-25 |  | 王世雷、赵英杰 |
| 21 | 5.3.2 | 办公 | 2d | 2025-07-24 | 2025-07-25 |  | 闫雯 |
| 22 | 5.4 | 江西分公司 | 2d | 2025-07-24 | 2025-07-25 |  | 郭加升、朱涛 |
| 23 | 6 | 数据导入 | 1d | 2025-07-26 | 2025-07-26 |  |  |
| 24 | 7 | **全员资产应用PC端和移动端发单测试** | 6d | 2025-07-26 | 2025-07-31 |  |  |
| 25 | 7.1 | 政务 | 6d | 2025-07-26 | 2025-07-31 |  | 金鹏 |
| 26 | 7.2 | 金融 | 6d | 2025-07-26 | 2025-07-31 |  | 陈栎 |
| 27 | 7.3 | 江西分公司 | 6d | 2025-07-26 | 2025-07-31 |  | 郭加升、朱涛 |

Notes:
- 15: 政务、股份已确认，

| ID | WBS | Task | Duration | Start | Finish | inPeople |
| --- | --- | --- | --- | --- | --- | --- |
| 28 | 7.4 | **股份（除江分）** | 6d | 2025-07-26 | 2025-07-31 |  |
| 29 | 7.4.1 | 数据中心 | 6d | 2025-07-26 | 2025-07-31 | 王世雷 |
| 30 | 7.4.2 | 办公 | 6d | 2025-07-26 | 2025-07-31 | 闫雯 |
| 31 | 8 | **资产云上线** | 2d | 2025-08-01 | 2025-08-02 |  |
| 32 | 8.1 | 集团发文公告（申请停机窗口） | 1d | 2025-08-01 | 2025-08-01 | 王世雷、郭加升、金鹏、陈栎 |
| 33 | 8.2 | “设备管理系统”入口 | 1d | 2025-08-01 | 2025-08-01 | 王婷婷 |
| 34 | 8.3 | 处理存量单据 | 1d | 2025-08-01 | 2025-08-01 | 闫雯 |
| 35 | 8.4 | 设置407全员只读，回收权限 | 1d | 2025-08-01 | 2025-08-01 | 刘文明 |
| 36 | 8.5 | 执行407推NC程序 | 1d | 2025-08-02 | 2025-08-02 | 熊海情 |
| 37 | 8.6 | **资产数据导出、梳理、导入** | 1d | 2025-08-02 | 2025-08-02 |  |
| 38 | 8.6.1 | 资产云数据清理 | 1d | 2025-08-02 | 2025-08-02 | 郭杨、何勇、叶勋、孙艳军 |
| 39 | 8.6.2 | **股份（除江分）** | 1d | 2025-08-02 | 2025-08-02 |  |
| 40 | 8.6.2.1 | 数据中心 | 1d | 2025-08-02 | 2025-08-02 | 王世雷 |
| 41 | 8.6.2.2 | 办公 | 1d | 2025-08-02 | 2025-08-02 | 闫雯 |
| 42 | 8.6.3 | 政务 | 1d | 2025-08-02 | 2025-08-02 | 金鹏 |
| 43 | 8.6.4 | 金融 | 1d | 2025-08-02 | 2025-08-02 | 陈栎 |
| 44 | 8.6.5 | 江西分公司 | 1d | 2025-08-02 | 2025-08-02 | 郭加升、朱涛 |
| 45 | 8.7 | 发单验证 | 1d | 2025-08-02 | 2025-08-02 | 各机构负责人 |
| 46 | 9 | 资产使用迁移公告及邮件 | 1d | 2025-08-04 | 2025-08-04 | 王世雷 |

Notes:
- 32: 周五各机构提前发布公告通知本机构人员停机维护事项
- 34: 407系统完成存量单据处理
- 35: 设置全员只读，确保数据静态
- 36: 7月份的数据还是使用原来的方式同步到nc,把407历史的使用人使用部门变动信息推送到NC65财务系统
- 38: 全量删除资产云数据
- 45: 各机构发单验证
- 46: 邮件通知人力、公告全员，资产管理迁移到资产云
